# Titulo do Projeto

Schedule from ProjectLibre, 2026-02-02 to 2026-11-23.

## Calendars

- Padrão[Imported]: Mon-Fri 09:00-12:00, 13:00-18:00; Sat-Sun off. Exceptions (off unless hours are given): 2026-02-15 to 2026-02-17, 2026-04-02 to 2026-04-03, 2026-04-20 to 2026-04-21, 2026-04-30 to 2026-05-01, 2026-06-03 to 2026-06-04, 2026-09-06 to 2026-09-07, 2026-10-11 to 2026-10-12, 2026-11-01 to 2026-11-02, 2026-11-19 to 2026-11-20.

## Resources

| Resource |
| --- |
| Não atribuído |
| PDI |
| Marketing |
| Controladoria |
| Int. Comercial |
| VP Mercado |
| Trademarketing |
| PCP |
| Exportação |
| Cliente |
| Engenharia |
| Produção |
| Fiscal |
| Contábil |
| Industrial |

## Schedule

| ID | WBS | Task | Type | Duration | Start | Finish | Predecessors | Resources | Date1 | Date2 |
| --- | --- | --- | --- | --- | --- | --- | --- | --- | --- | --- |
| 1 | 1 | **Titulo do Projeto** |  | 201d | 2026-02-02 | 2026-11-23 |  |  |  |  |
| 2 | 2 | GATE 1 - APROVAÇÃO DA IDEIA | milestone | 0d | 2026-02-02 | 2026-02-02 |  |  | 2025-07-25 | 2025-07-25 |
| 3 | 3 | **FASE 2 - ESTUDO** |  | 117d | 2026-02-02 | 2026-07-22 |  |  | 2025-12-09 | 2025-07-28 |
| 4 | 3.1 | Elaboração do Briefing |  | 5d | 2026-02-02 | 2026-02-06 | 2 | Marketing | 2025-08-01 | 2025-07-28 |
| 5 | 3.2 | Desenvolvimento de Protótipo |  | 30d | 2026-02-09 | 2026-03-20 | 4 | PDI | 2025-09-12 | 2025-08-04 |
| 6 | 3.3 | Teste de Consumidor com Preço Médio de Venda (PMV) |  | 25d | 2026-03-23 | 2026-04-24 | 5 | Marketing | 2025-10-17 | 2025-09-15 |
| 7 | 3.4 | Analise de Risco (antes do custeio) |  | 80d | 2026-02-09 | 2026-05-29 | 4 | PDI | 2025-11-21 | 2025-08-04 |
| 8 | 3.5 | **Avaliação de Produção** |  | 18d | 2026-02-09 | 2026-03-06 |  |  | 2025-08-29 | 2025-08-04 |
| 9 | 3.5.1 | Analise de Produção Sem Capex |  | 20d | 2026-02-09 | 2026-03-06 | 4 | PDI | 2025-08-29 | 2025-08-04 |
| 10 | 3.5.2 | Análise de Produção Via Terceiros |  | 20d | 2026-02-09 | 2026-03-06 | 4 | PDI | 2025-08-29 | 2025-08-04 |
| 11 | 3.5.3 | Análise de Produção Com Capex |  | 20d | 2026-02-09 | 2026-03-06 | 4 | PDI | 2025-08-29 | 2025-08-04 |
| 12 | 3.6 | **Alinhamento com as áreas envolvidas** |  | 5d | 2026-03-09 | 2026-03-13 |  |  | 2025-08-08 | 2025-08-04 |
| 13 | 3.6.1 | Cálculo de Mão de Obra (CMO)/ Cálculo de Energia Elétrica (CEE) |  | 5d | 2026-03-09 | 2026-03-13 | 8 | PDI | 2025-08-08 | 2025-08-04 |
| 14 | 3.6.2 | Investimentos necessários |  | 5d | 2026-03-09 | 2026-03-13 | 8 | PDI | 2025-08-08 | 2025-08-04 |
| 15 | 3.6.3 | DAD/ Ficha de Consumo de Embalagem (FCE) preliminar |  | 5d | 2026-03-09 | 2026-03-13 | 8 | PDI | 2025-08-08 | 2025-08-04 |
| 16 | 3.7 | **Simulação Custeio Preliminar** |  | 13d | 2026-03-16 | 2026-04-01 |  |  | 2025-08-25 | 2025-08-11 |
| 17 | 3.7.1 | Incluir informações no Planner para simulação |  | 3d | 2026-03-16 | 2026-03-18 | 12 | PDI | 2025-08-13 | 2025-08-11 |
| 18 | 3.7.2 | Simulação de Custo |  | 5d | 2026-03-19 | 2026-03-25 | 17 |  | 2025-08-18 | 2025-08-14 |
| 19 | 3.7.3 | Simulação de Margem |  | 2d | 2026-03-26 | 2026-03-27 | 18 | Int. Comercial | 2025-08-20 | 2025-08-19 |
| 20 | 3.7.4 | Aprovação do estudo de margem |  | 3d | 2026-03-30 | 2026-04-01 | 19 | Marketing | 2025-08-25 | 2025-08-21 |
| 21 | 3.8 | **Desenvolvimento de Produto** |  | 57d | 2026-04-02 | 2026-06-25 |  |  | 2025-11-17 | 2025-08-26 |
| 22 | 3.8.1 | Ficha Técnica de Rotulagem (FTR) preliminar |  | 5d | 2026-04-02 | 2026-04-08 | 16 | PDI | 2025-09-01 | 2025-08-26 |
| 23 | 3.8.2 | Especificação de MP e ME |  | 5d | 2026-04-02 | 2026-04-08 | 16 | PDI | 2025-09-01 | 2025-08-26 |
| 24 | 3.8.3 | Pedido de Material de Embalagem para teste industrial |  | 20d | 2026-04-09 | 2026-05-06 | 23, 22 | PDI | 2025-09-29 | 2025-09-02 |
| 25 | 3.8.4 | Pedido de Matéria Prima para teste industrial |  | 20d | 2026-04-09 | 2026-05-06 | 22, 23 | PDI | 2025-09-29 | 2025-09-02 |
| 26 | 3.8.6 | Realização do Teste Industrial e/ou laboratorial |  | 20d | 2026-05-07 | 2026-06-03 | 25, 24 | PDI | 2025-10-27 | 2025-09-30 |
| 27 | 3.9.1 | Relatório do Teste Industrial e/ou laboratorial. Definir se teve alteração de custo |  | 1d | 2026-06-05 | 2026-06-05 | 26 | PDI | 2025-10-28 | 2025-10-28 |
| 28 | 3.9.2 | Teste de Transporte do Teste Industrial |  | 15d | 2026-06-05 | 2026-06-25 | 26 | PDI | 2025-11-17 | 2025-10-28 |

| ID | WBS | Task | Type | Duration | Start | Finish | Predecessors | Resources | Date1 | Date2 |
| --- | --- | --- | --- | --- | --- | --- | --- | --- | --- | --- |
| 29 | 3.10 | **Simulação de Custeio Final** |  | 19d | 2026-06-26 | 2026-07-22 |  |  | 2025-12-09 | 2025-11-18 |
| 30 | 3.8.5 | Corrigir informações no Planner para simulação |  | 3d | 2026-06-26 | 2026-06-30 | 21 | PDI | 2025-11-20 | 2025-11-18 |
| 31 | 5.1.1 | Atualizar Simulação de Custo |  | 5d | 2026-07-01 | 2026-07-14 | 30 | Controladoria | 2025-11-25 | 2025-11-21 |
| 32 | 3.11.1 | Atualizar Simulação de Margem |  | 3d | 2026-07-15 | 2026-07-17 | 31 | Int. Comercial | 2025-12-04 | 2025-11-26 |
| 33 | 3.11.2 | Aprovação Margem Final |  | 3d | 2026-07-20 | 2026-07-22 | 32 | Marketing | 2025-12-09 | 2025-12-05 |
| 34 | 4 | GATE 2 - APROVAÇÃO DO ESTUDO | milestone | 0d | 2026-07-22 | 2026-07-22 | 8, 6, 7, 33 | Marketing | 2025-12-09 | 2025-12-09 |
| 35 | 5 | **FASE 3 - EXECUÇÃO** |  | 84d | 2026-07-23 | 2026-11-23 |  |  | 2026-05-22 | 2025-12-10 |
| 36 | 5.1 | **Reunião de Kick-off da execução** |  | 1d | 2026-07-23 | 2026-07-23 |  |  | 2025-12-11 | 2025-12-10 |
| 37 | 5.2.1 | Apresentar projeto |  | 1d | 2026-07-23 | 2026-07-23 | 34 | Marketing | 2025-12-11 | 2025-12-10 |
| 38 | 5.5.1 | Apresentar papéis e responsabilidades |  | 1d | 2026-07-23 | 2026-07-23 | 34 | Marketing | 2025-12-11 | 2025-12-10 |
| 39 | 5.2 | **Cadastro** |  | 3d | 2026-07-24 | 2026-07-28 |  |  | 2025-12-16 | 2025-12-12 |
| 40 | 5.2.2 | Cadastro de MP e ME |  | 3d | 2026-07-24 | 2026-07-28 | 36 | PDI | 2025-12-16 | 2025-12-12 |
| 41 | 5.2.3 | Cadastrar PI e PE |  | 3d | 2026-07-24 | 2026-07-28 | 36 | PDI | 2025-12-16 | 2025-12-12 |
| 42 | 5.2.4 | Gerar código de PA/ descrição/ Código de Barra da Unidade de Venda (EAN)/ Código de Barra da Caixa Master (DUN) |  | 1d | 2026-07-24 | 2026-07-24 | 36 | Marketing | 2025-12-12 | 2025-12-12 |
| 43 | 5.2.5 | Cadastrar PA no sistema (Dados FTR e Ficha Técnica de Embalagem (FCE)) |  | 3d | 2026-07-24 | 2026-07-28 | 36 | Marketing | 2025-12-16 | 2025-12-12 |
| 44 | 5.2.6 | Cadastrar as contas contábeis, as informações de impostos nas filiais e grupo de comissão |  | 2d | 2026-07-24 | 2026-07-27 | 36 | Marketing | 2025-12-15 | 2025-12-12 |
| 45 | 5.3 | **Documentação do produto** |  | 12d | 2026-07-29 | 2026-08-13 |  |  | 2025-12-25 | 2025-12-17 |
| 46 | 5.3.1 | DAD/ FCE |  | 3d | 2026-07-29 | 2026-07-31 | 39 | PDI | 2025-12-19 | 2025-12-17 |
| 47 | 5.3.2 | CMO/ CEE |  | 3d | 2026-07-29 | 2026-08-03 | 39 | Industrial | 2025-12-19 | 2025-12-17 |
| 48 | 5.3.3 | FTR final |  | 3d | 2026-07-29 | 2026-07-31 | 39 | PDI | 2025-12-19 | 2025-12-17 |
| 49 | 5.3.4 | Especificações (ETE/ ETM/ ETP) |  | 3d | 2026-07-29 | 2026-07-31 | 39 | PDI | 2025-12-19 | 2025-12-17 |
| 50 | 5.3.5 | Lançamento da receita do produto no sistema |  | 2d | 2026-08-03 | 2026-08-11 | 46 | Controladoria | 2025-12-23 | 2025-12-22 |
| 51 | 5.3.6 | Checagem do cadastro na receita do produto no sistema |  | 2d | 2026-08-12 | 2026-08-13 | 50 | PDI | 2025-12-25 | 2025-12-24 |
| 52 | 5.4 | **Desenvolvimento de Embalagens** |  | 35d | 2026-07-23 | 2026-09-10 |  |  | 2026-01-30 | 2025-12-12 |
| 53 | 5.4.1 | Desenvolvimento de Layout da Embalagem |  | 20d | 2026-07-23 | 2026-08-19 | 34, 48FF+5d | Marketing | 2026-01-08 | 2025-12-12 |
| 54 | 5.4.2 | Aprovação layout |  | 3d | 2026-08-20 | 2026-08-24 | 53 |  | 2026-01-13 | 2026-01-09 |
| 55 | 5.4.3 | Planificação da arte com texto |  | 3d | 2026-08-25 | 2026-08-27 | 54, 45, 39 | Marketing | 2026-01-16 | 2026-01-14 |
| 56 | 5.4.4 | Arte Final |  | 7d | 2026-08-28 | 2026-09-07 | 55 | Marketing | 2026-01-27 | 2026-01-19 |
| 57 | 5.4.5 | Finalização da arte com texto |  | 2d | 2026-09-08 | 2026-09-09 | 56 | Marketing | 2026-01-29 | 2026-01-28 |
| 58 | 5.4.6 | Envio da arte para fornecedor filme/ display e caixa |  | 1d | 2026-09-10 | 2026-09-10 | 57 | Marketing | 2026-01-30 | 2026-01-30 |
| 59 | 5.5 | Comunicado de início de fabricação ANVISA |  | 30d | 2026-08-25 | 2026-10-05 | 54, 45, 39 | PDI | 2026-02-24 | 2026-01-14 |
| 60 | 5.7 | Solicitações de Compras - MP e ME |  | 1d | 2026-08-20 | 2026-08-20 | 53 |  | 2026-02-02 | 2026-02-02 |
| 61 | 5.12 | Processo de Compra (Cotação) |  | 5d | 2026-08-21 | 2026-08-27 | 60 | Exportação | 2026-02-09 | 2026-02-03 |
| 62 | 5.6 | Processo de Compra - Pedido MP e ME |  | 5d | 2026-08-28 | 2026-09-03 | 61 | Exportação | 2026-02-16 | 2026-02-10 |
| 63 | 5.8 | Entrega de matéria prima |  | 30d | 2026-09-04 | 2026-10-15 | 62 | Exportação | 2026-03-30 | 2026-02-17 |
| 64 | 5.9 | Entrega de filme/filme individual |  | 45d | 2026-09-04 | 2026-11-05 | 62 | Exportação | 2026-04-20 | 2026-02-17 |
| 65 | 5.10 | Entrega de display/caixa |  | 40d | 2026-09-04 | 2026-10-29 | 62 | Exportação | 2026-04-13 | 2026-02-17 |
| 66 | 5.15 | Cadastrar Preço Tabela de Vendas |  | 1d | 2026-11-06 | 2026-11-06 | 64, 63, 65 | Int. Comercial | 2026-04-21 | 2026-04-21 |
| 67 | 5.16 | Comunicado do Lançamento / Liberação de Vendas |  | 1d | 2026-11-06 | 2026-11-06 | 64, 63, 65 | Marketing | 2026-04-21 | 2026-04-21 |

| ID | WBS | Task | Type | Duration | Start | Finish | Predecessors | Resources | Date1 | Date2 |
| --- | --- | --- | --- | --- | --- | --- | --- | --- | --- | --- |
| 68 | 5.17 | **Produção do Produto** |  | 10d | 2026-11-06 | 2026-11-19 |  |  | 2026-05-04 | 2026-04-21 |
| 69 | 5.17.1 | Treinamento Equipe para Produção Piloto |  | 2d | 2026-11-06 | 2026-11-09 | 63, 64, 65 | PDI | 2026-04-22 | 2026-04-21 |
| 70 | 5.17.2 | Acompanhamento da Produção |  | 2d | 2026-11-10 | 2026-11-11 | 69 | PDI | 2026-04-24 | 2026-04-23 |
| 71 | 5.17.3 | Gerar Relatório de Produção |  | 2d | 2026-11-12 | 2026-11-13 | 70 | PDI | 2026-04-28 | 2026-04-27 |
| 72 | 5.17.4 | Conferência Cadastro x Relatório |  | 2d | 2026-11-16 | 2026-11-17 | 71 | PDI | 2026-04-30 | 2026-04-29 |
| 73 | 5.17.5 | Revisão cadastro do produto |  | 2d | 2026-11-18 | 2026-11-19 | 72 | Controladoria | 2026-05-04 | 2026-05-01 |
| 74 | 5.18 | Liberação de Faturamento |  | 1d | 2026-11-23 | 2026-11-23 | 67, 59, 73 | Marketing | 2026-05-05 | 2026-05-05 |
| 75 | 6 | GATE 3 - APROVAÇÃO DO PROJETO | milestone | 0d | 2026-11-23 | 2026-11-23 | 35 |  | 2026-05-22 | 2026-05-22 |
