# Titulo do Projeto

Schedule from MS Project XML, 2026-02-02 to 2026-07-10.

## Calendars

- Padrão[Imported]: Mon-Fri 09:00-12:00, 13:00-18:00; Sat-Sun off. Exceptions (off unless hours are given): 2026-02-15 to 2026-02-17, 2026-04-02 to 2026-04-03, 2026-04-20 to 2026-04-21, 2026-04-30 to 2026-05-01, 2026-06-03 to 2026-06-04.

## Resources

| Resource |
| --- |
| Não atribuído |
| P&D |
| Marketing |
| Controladoria |
| Int. Comercial |
| VP Mercado |
| Exportação |
| Cliente |
| Fiscal |
| Engenharia |
| Produção |
| Contábil |
| Industrial |

## Schedule

| ID | WBS | Task | Type | Duration | Start | Finish | Predecessors | Resources | Date1 | Date2 |
| --- | --- | --- | --- | --- | --- | --- | --- | --- | --- | --- |
| 1 | 1 | **Titulo do Projeto** |  | 109d | 2026-02-02 | 2026-07-10 |  |  |  |  |
| 2 | 2 | GATE 1 - APROVAÇÃO DA IDEIA | milestone | 0d | 2026-02-02 | 2026-02-02 |  |  | 2025-07-25 | 2025-07-25 |
| 3 | 3 | FASE 2 - ESTUDO |  | 30d | 2026-02-02 | 2026-03-17 | 2 |  | 2025-12-09 | 2025-07-28 |
| 4 | 4 | GATE 2 - APROVAÇÃO DO ESTUDO | milestone | 0d | 2026-03-17 | 2026-03-17 | 3 | Marketing | 2025-12-09 | 2025-12-09 |
| 5 | 5 | **FASE 3 - EXECUÇÃO** |  | 79d | 2026-03-18 | 2026-07-10 |  |  | 2026-05-22 | 2025-12-10 |
| 6 | 5.1 | **Reunião de Kick-off da execução** |  | 1d | 2026-03-18 | 2026-03-18 |  |  | 2025-12-11 | 2025-12-10 |
| 7 | 5.2.1 | Apresentar projeto, papéis e responsabilidades |  | 1d | 2026-03-18 | 2026-03-18 | 4 | Marketing | 2025-12-11 | 2025-12-10 |
| 8 | 5.2 | **Cadastro** |  | 3d | 2026-03-19 | 2026-03-23 |  |  | 2025-12-16 | 2025-12-12 |
| 9 | 5.2.2 | Cadastro de MP e ME |  | 3d | 2026-03-19 | 2026-03-23 | 6 | P&D | 2025-12-16 | 2025-12-12 |
| 10 | 5.2.3 | Cadastrar PI e PE |  | 3d | 2026-03-19 | 2026-03-23 | 6 | P&D | 2025-12-16 | 2025-12-12 |
| 11 | 5.2.4 | Gerar código de PA/ descrição/ Código de Barra da Unidade de Venda (EAN)/ Código de Barra da Caixa Master (DUN) |  | 1d | 2026-03-19 | 2026-03-19 | 6 | Marketing | 2025-12-12 | 2025-12-12 |
| 12 | 5.2.5 | Cadastrar PA no sistema (Dados FTR e Ficha Técnica de Embalagem (FCE)) |  | 3d | 2026-03-19 | 2026-03-23 | 6 | Marketing | 2025-12-16 | 2025-12-12 |
| 13 | 5.2.6 | Cadastrar as contas contábeis, as informações de impostos nas filiais e grupo de comissão |  | 2d | 2026-03-19 | 2026-03-20 | 6 | Marketing | 2025-12-15 | 2025-12-12 |
| 14 | 5.3 | **Documentação do produto** |  | 7d | 2026-03-24 | 2026-04-01 |  |  | 2025-12-25 | 2025-12-17 |
| 15 | 5.3.1 | DAD/ FCE |  | 3d | 2026-03-24 | 2026-03-26 | 8 | P&D | 2025-12-19 | 2025-12-17 |
| 16 | 5.3.2 | CMO/ CEE |  | 3d | 2026-03-24 | 2026-03-27 | 8 | Industrial | 2025-12-19 | 2025-12-17 |
| 17 | 5.3.3 | FTR final |  | 3d | 2026-03-24 | 2026-03-26 | 8 | P&D | 2025-12-19 | 2025-12-17 |
| 18 | 5.3.4 | Especificações (ETE/ ETM/ ETP) |  | 3d | 2026-03-24 | 2026-03-26 | 8 | P&D | 2025-12-19 | 2025-12-17 |
| 19 | 5.3.5 | Lançamento da receita do produto no sistema |  | 2d | 2026-03-27 | 2026-03-30 | 15 | Controladoria | 2025-12-23 | 2025-12-22 |
| 20 | 5.3.6 | Checagem do cadastro na receita do produto no sistema |  | 2d | 2026-03-31 | 2026-04-01 | 19 | P&D | 2025-12-25 | 2025-12-24 |
| 21 | 5.4 | **Desenvolvimento de Embalagens** |  | 20d | 2026-03-18 | 2026-04-15 |  |  | 2026-01-30 | 2025-12-12 |
| 22 | 5.4.1 | Desenvolvimento de Layout da Embalagem |  | 10d | 2026-03-18 | 2026-03-31 | 4 | Marketing | 2026-01-08 | 2025-12-12 |
| 23 | 5.4.2 | Aprovação layout |  | 3d | 2026-04-01 | 2026-04-03 | 22 |  | 2026-01-13 | 2026-01-09 |
| 24 | 5.4.3 | Planificação da arte com texto |  | 5d | 2026-04-06 | 2026-04-10 | 17, 23 | Marketing | 2026-01-16 | 2026-01-14 |
| 25 | 5.4.4 | Arte Final |  | 2d | 2026-04-13 | 2026-04-14 | 24 | Marketing | 2026-01-27 | 2026-01-19 |
| 26 | 5.4.6 | Envio da arte para fornecedor filme/ display e caixa |  | 1d | 2026-04-15 | 2026-04-15 | 25 | Marketing | 2026-01-30 | 2026-01-30 |

| ID | WBS | Task | Type | Duration | Start | Finish | Predecessors | Resources | Date1 | Date2 |
| --- | --- | --- | --- | --- | --- | --- | --- | --- | --- | --- |
| 27 | 1.4.5 | **Solicitações e Entregas** |  | 54d | 2026-04-13 | 2026-06-30 |  |  |  |  |
| 28 | 5.7 | Solicitações de Compras - MP e ME |  | 1d | 2026-04-13 | 2026-04-13 | 24 | Exportação | 2026-02-02 | 2026-02-02 |
| 29 | 5.12 | Processo de Compra (Cotação) |  | 5d | 2026-04-14 | 2026-04-20 | 28 | Cliente | 2026-02-09 | 2026-02-03 |
| 30 | 5.6 | Processo de Compra - Pedido MP e ME |  | 5d | 2026-04-22 | 2026-04-28 | 29 | Cliente | 2026-02-16 | 2026-02-10 |
| 31 | 5.8 | Entrega de matéria prima |  | 30d | 2026-04-29 | 2026-06-09 | 30 | Cliente | 2026-03-30 | 2026-02-17 |
| 32 | 5.9 | Entrega de filme/filme individual |  | 45d | 2026-04-29 | 2026-06-30 | 30 | Cliente | 2026-04-20 | 2026-02-17 |
| 33 | 5.10 | Entrega de display/caixa |  | 40d | 2026-04-29 | 2026-06-23 | 30 | Cliente | 2026-04-13 | 2026-02-17 |
| 34 | 5.15 | Cadastrar Preço Tabela de Vendas |  | 1d | 2026-07-01 | 2026-07-01 | 32, 31, 33 | Int. Comercial | 2026-04-21 | 2026-04-21 |
| 35 | 5.16 | Comunicado do Lançamento / Liberação de Vendas |  | 1d | 2026-07-01 | 2026-07-01 | 32, 31, 33 | Marketing | 2026-04-21 | 2026-04-21 |
| 36 | 5.17 | **Produção do Produto** |  | 50d | 2026-04-29 | 2026-07-09 |  |  | 2026-05-04 | 2026-04-21 |
| 37 | 5.5 | Comunicado de início de fabricação ANVISA |  | 10d | 2026-04-29 | 2026-05-12 | 30 | P&D | 2026-02-24 | 2026-01-14 |
| 38 | 5.17.1 | Treinamento Equipe para Produção Piloto |  | 2d | 2026-07-01 | 2026-07-02 | 31, 32, 33, 37 | P&D | 2026-04-22 | 2026-04-21 |
| 39 | 5.17.2 | Acompanhamento da Produção |  | 2d | 2026-07-01 | 2026-07-02 | 38FF | P&D | 2026-04-24 | 2026-04-23 |
| 40 | 5.17.3 | Gerar Relatório de Produção |  | 1d | 2026-07-03 | 2026-07-03 | 39 | P&D | 2026-04-28 | 2026-04-27 |
| 41 | 5.17.4 | Conferência Cadastro x Relatório |  | 2d | 2026-07-06 | 2026-07-07 | 40 | P&D | 2026-04-30 | 2026-04-29 |
| 42 | 5.17.5 | Revisão cadastro do produto |  | 2d | 2026-07-08 | 2026-07-09 | 41 | Marketing | 2026-05-04 | 2026-05-01 |
| 43 | 5.18 | Liberação de Faturamento |  | 1d | 2026-07-10 | 2026-07-10 | 42 | Marketing | 2026-05-05 | 2026-05-05 |
| 44 | 6 | GATE 3 - APROVAÇÃO DO PROJETO | milestone | 0d | 2026-07-10 | 2026-07-10 | 43 |  | 2026-05-22 | 2026-05-22 |
